# KiwiTeam_Software

Schedule from MS Project, 2015-01-21 to 2015-05-18, status date 2015-01-21, costs in $, A marks actual dates.
UPRM, Mayaguez Campus

## Calendars

- Standard: Mon-Fri 08:00-12:00, 13:00-17:00; Sat-Sun off.

## Resources

| Resource | Rate |
| --- | --- |
| Jose A. Virella Velazquez | 25 |
| Luis M. Tavarez Arce | 24.17 |
| Lexter L. Seda Sanchez | 24.17 |

## Schedule

| ID | WBS | Task | Duration | Start | Finish | Predecessors | Complete | Deadline | Resources | Work | Actual work | Cost | Actual cost |
| --- | --- | --- | --- | --- | --- | --- | --- | --- | --- | --- | --- | --- | --- |
| 1 | 1 | **System Specification** | 14d | 2015-01-21 A | 2015-02-09 A |  | 100% |  |  | 132h | 132h | 3,225.3 | 3,225.3 |
| 2 | 1.1 | Definition of Needs | 6d | 2015-01-21 A | 2015-01-28 A |  | 100% |  | Jose A. Virella Velazquez [25%]; Luis M. Tavarez Arce [25%]; Lexter L. Seda Sanchez [25%] | 24h | 24h | 585.06 | 585.06 |
| 3 | 1.2 | Concept Development | 3d | 2015-01-21 A | 2015-01-23 A | 2SS | 100% |  | Jose A. Virella Velazquez [25%]; Luis M. Tavarez Arce [25%]; Lexter L. Seda Sanchez [25%] | 18h | 18h | 440.04 | 440.04 |
| 4 | 1.3 | System requirements Assessment | 4d | 2015-01-26 A | 2015-01-29 A | 3 | 100% |  | Jose A. Virella Velazquez [25%]; Luis M. Tavarez Arce [25%]; Lexter L. Seda Sanchez [25%] | 24h | 24h | 586.72 | 586.72 |
| 5 | 1.4 | Specs Document elaboration | 5d | 2015-01-26 A | 2015-01-30 A | 4SS | 100% |  | Jose A. Virella Velazquez [25%]; Luis M. Tavarez Arce [25%]; Lexter L. Seda Sanchez [25%] | 30h | 30h | 733.4 | 733.4 |
| 6 | 1.5 | Negotiation with client | 1w | 2015-02-02 A | 2015-02-06 A | 5 | 100% |  | Jose A. Virella Velazquez [25%]; Luis M. Tavarez Arce [25%]; Lexter L. Seda Sanchez [25%] | 30h | 30h | 733.4 | 733.4 |
| 7 | 1.6 | Contract | 1d | 2015-02-09 A | 2015-02-09 A | 6 | 100% | 2015-02-09 | Jose A. Virella Velazquez [25%]; Luis M. Tavarez Arce [25%]; Lexter L. Seda Sanchez [25%] | 6h | 6h | 146.68 | 146.68 |
| 8 | 2 | **System Design** | 15d | 2015-02-10 A | 2015-03-02 A | 7 | 100% | 2015-03-03 |  | 165.2h | 165.2h | 4,036.04 | 4,036.04 |
| 9 | 2.1 | Analysis of alternatives | 3d | 2015-02-10 A | 2015-02-12 A |  | 100% |  | Jose A. Virella Velazquez [25%]; Luis M. Tavarez Arce [25%]; Lexter L. Seda Sanchez [25%] | 18h | 18h | 440.04 | 440.04 |
| 10 | 2.2 | System architecture | 8d | 2015-02-10 A | 2015-02-19 A | 9SS | 100% |  | Jose A. Virella Velazquez [10%]; Luis M. Tavarez Arce [10%]; Lexter L. Seda Sanchez [10%] | 33.6h | 33.6h | 821.41 | 821.41 |
| 11 | 2.3 | Interface definition | 2d | 2015-02-13 A | 2015-02-16 A | 9 | 100% |  | Jose A. Virella Velazquez [30%]; Luis M. Tavarez Arce [30%]; Lexter L. Seda Sanchez [30%] | 14.4h | 14.4h | 352.03 | 352.03 |
| 12 | 2.4 | Detail Design of Android App GUI | 6d | 2015-02-17 A | 2015-02-24 A | 11 | 100% |  | Luis M. Tavarez Arce [30%]; Lexter L. Seda Sanchez [25%] | 20.4h | 20.4h | 493.07 | 493.07 |
| 13 | 2.5 | Detail Design of Android App Logic | 6d | 2015-02-20 A | 2015-02-27 A | 12FS-3d | 100% |  | Luis M. Tavarez Arce [30%]; Jose A. Virella Velazquez [20%] | 20.4h | 20.4h | 498.05 | 498.05 |
| 14 | 2.6 | Detal Design of Web Application Front-End | 6d | 2015-02-17 A | 2015-02-24 A | 11 | 100% |  | Jose A. Virella Velazquez [25%]; Lexter L. Seda Sanchez [25%] | 18h | 18h | 445.02 | 445.02 |
| 15 | 2.7 | Detail Design of Web Application Logic | 6d | 2015-02-20 A | 2015-02-27 A | 14FS-3d | 100% |  | Jose A. Virella Velazquez [30%]; Luis M. Tavarez Arce [15%] | 17.2h | 17.2h | 424.02 | 424.02 |
| 16 | 2.8 | Database Server Design | 7d | 2015-02-17 A | 2015-02-25 A | 11 | 100% |  | Lexter L. Seda Sanchez [25%]; Luis M. Tavarez Arce [15%] | 17.2h | 17.2h | 415.72 | 415.72 |
| 17 | 2.9 | Design Acceptance | 1d | 2015-03-02 A | 2015-03-02 A | 15, 12, 13, 14, 16 | 100% |  | Jose A. Virella Velazquez [25%]; Luis M. Tavarez Arce [25%]; Lexter L. Seda Sanchez [25%] | 6h | 6h | 146.68 | 146.68 |
| 18 | 3 | **Implementation** | 16d | 2015-03-03 A | 2015-03-24 A | 17 | 100% |  |  | 126h | 126h | 3,071.98 | 3,071.98 |
| 19 | 3.1 | Implementation of Android GUI & Logic | 16d | 2015-03-03 A | 2015-03-24 A | 12 | 100% |  | Luis M. Tavarez Arce [20%]; Lexter L. Seda Sanchez [10%] | 38.4h | 38.4h | 928.13 | 928.13 |
| 20 | 3.2 | Implementation of Website Front-End & Logic | 16d | 2015-03-03 A | 2015-03-24 A | 14 | 100% |  | Jose A. Virella Velazquez [15%]; Lexter L. Seda Sanchez [15%] | 30h | 30h | 741.04 | 741.04 |
| 21 | 3.3 | Implementation of Database Server | 16d | 2015-03-03 A | 2015-03-24 A | 16 | 100% |  | Lexter L. Seda Sanchez [20%]; Luis M. Tavarez Arce [15%]; Jose A. Virella Velazquez [10%] | 57.6h | 57.6h | 1,402.82 | 1,402.82 |
| 22 | 4 | **Unit Testing & Refining** | 4d | 2015-03-25 A | 2015-03-30 A |  | 100% | 2015-04-06 |  | 40h | 40h | 976.1 | 976.1 |
| 23 | 4.1 | Testing Android GUI & Logic | 4d | 2015-03-25 A | 2015-03-30 A | 19 | 100% |  | Luis M. Tavarez Arce [25%]; Lexter L. Seda Sanchez [15%] | 12.8h | 12.8h | 309.38 | 309.38 |
| 24 | 4.2 | Testing Website Front-End & Logic | 4d | 2015-03-25 A | 2015-03-30 A | 20 | 100% |  | Jose A. Virella Velazquez [20%]; Lexter L. Seda Sanchez [20%] | 12.8h | 12.8h | 314.69 | 314.69 |
| 25 | 4.3 | Testing Database Server | 4d | 2015-03-25 A | 2015-03-30 A | 21 | 100% |  | Jose A. Virella Velazquez [15%]; Lexter L. Seda Sanchez [15%]; Luis M. Tavarez Arce [15%] | 14.4h | 14.4h | 352.03 | 352.03 |

| ID | WBS | Task | Duration | Start | Finish | Predecessors | Complete | Actual finish | Total slack | Deadline | Resources | Work | Actual work | Cost | Actual cost |
| --- | --- | --- | --- | --- | --- | --- | --- | --- | --- | --- | --- | --- | --- | --- | --- |
| 26 | 5 | **System Integration** | 29d | 2015-03-31 A | 2015-05-08 | 22 | 100% | 2015-05-07 |  |  |  | 241.6h | 241.6h | 5,909.86 | 5,909.86 |
| 27 | 5.1 | Integration of Android app & Database | 10d | 2015-03-31 A | 2015-04-13 A | 23 | 100% |  |  |  | Luis M. Tavarez Arce [30%]; Lexter L. Seda Sanchez [20%] | 40h | 40h | 966.8 | 966.8 |
| 28 | 5.2 | Integration of Website & Database | 11d | 2015-03-31 A | 2015-04-14 A | 24 | 100% |  |  |  | Jose A. Virella Velazquez [40%]; Lexter L. Seda Sanchez [20%] | 52.8h | 52.8h | 1,305.39 | 1,305.39 |
| 29 | 5.3 | Integration Testing | 9d | 2015-04-15 A | 2015-04-27 A | 27, 28 | 100% |  |  |  | Jose A. Virella Velazquez [60%]; Luis M. Tavarez Arce [60%]; Lexter L. Seda Sanchez [60%] | 129.6h | 129.6h | 3,168.29 | 3,168.29 |
| 30 | 5.4 | System Demo | 8d | 2015-04-28 A | 2015-05-07 A | 29 | 100% |  |  | 2015-05-08 | Jose A. Virella Velazquez [10%]; Luis M. Tavarez Arce [10%]; Lexter L. Seda Sanchez [10%] | 19.2h | 19.2h | 469.38 | 469.38 |
| 31 | 6 | **Delivery** | 7d | 2015-05-08 | 2015-05-18 |  |  |  | 0d |  |  | 50.16h |  | 1,226.24 |  |
| 32 | 6.1 | Deployment on site | 2d | 2015-05-08 | 2015-05-11 | 30 |  |  | 0d |  | Jose A. Virella Velazquez [50%]; Luis M. Tavarez Arce [50%]; Lexter L. Seda Sanchez [50%] | 24h |  | 586.72 |  |
| 33 | 6.2 | Training | 3d | 2015-05-12 | 2015-05-14 | 32 |  |  | 0d |  | Jose A. Virella Velazquez [33%]; Luis M. Tavarez Arce [33%]; Lexter L. Seda Sanchez [33%] | 23.76h |  | 580.85 |  |
| 34 | 6.3 | Client acceptance | 2d | 2015-05-15 | 2015-05-18 | 33 |  |  | 0d | 2015-05-18 | Jose A. Virella Velazquez [5%]; Luis M. Tavarez Arce [5%]; Lexter L. Seda Sanchez [5%] | 2.4h |  | 58.67 |  |
